# Rapstar

Schedule from MS Project, 2020-11-01 to 2020-12-17, costs in ¥, A marks actual dates.
Microsoft

## Calendars

- RapStar的日历: Mon-Fri 08:00-12:05, 14:00-17:15; Sat off; Sun 08:00-12:05, 14:00-17:15. Exceptions (off unless hours are given): 2020-11-28 08:00-12:00, 13:00-17:00 (调课-上课), 2020-11-29 (调课-休假).

## Resources

| Resource | Rate |
| --- | --- |
| 钱思宇 | 24 |
| 郑微微 | 24 |
| 关子欣 | 24 |
| 张若兰 | 24 |
| 李晓璐 | 24 |
| 刘婉婷 | 24 |
| 真机1 |  |
| 真机2 |  |
| 真机3 |  |
| 真机4 |  |
| 真机5 |  |
| 真机6 |  |
| 电脑1 |  |
| 电脑2 |  |
| 电脑3 |  |
| 电脑4 |  |
| 电脑5 |  |
| 电脑6 |  |

## Schedule

| ID | WBS | Task | Type | Duration | Start | Finish | Predecessors | Complete | Remaining | Actual start | Resources | Work | Actual work | Cost | Actual cost | 间接成本 | 储备资金 |
| --- | --- | --- | --- | --- | --- | --- | --- | --- | --- | --- | --- | --- | --- | --- | --- | --- | --- |
| 1 | 1 | **RapStar项目** |  | 37.64d | 2020-11-01 A | 2020-12-17 |  | 33% | 25.24d |  |  | 2101h | 825.42h | 50,400 | 19,810 | ¥5,040.00 | ¥10,080.00 |
| 2 | 1.1 | **准备** |  | 2.72d | 2020-11-01 A | 2020-11-03 A |  | 100% |  |  |  | 95.08h | 95.08h | 2,282 | 2,282 | ¥228.20 | ¥456.40 |
| 3 | 1.1.1 | 组建小组 | manual | 0.89d | 2020-11-01 A | 2020-11-01 A |  | 100% |  |  | 钱思宇 | 7.08h | 7.08h | 170 | 170 | ¥17.00 | ¥34.00 |
| 4 | 1.1.2 | 确定项目主题 | manual | 1.83d | 2020-11-01 A | 2020-11-03 A |  | 100% |  |  | 关子欣; 李晓璐; 刘婉婷; 钱思宇; 张若兰; 郑微微 | 88h | 88h | 2,112 | 2,112 | ¥211.20 | ¥422.40 |
| 5 | 1.2 | 准备 | milestone, manual | 0d | 2020-11-03 | 2020-11-03 |  |  |  |  |  |  |  |  |  | ¥0.00 | ¥0.00 |
| 6 | 1.3 | **需求分析** |  | 3.64d | 2020-11-04 | 2020-11-07 | 2 |  |  |  |  | 64.75h |  | 1,554 |  | ¥155.40 | ¥310.80 |
| 7 | 1.3.1 | 市场调研 | manual | 1.8d | 2020-11-04 | 2020-11-05 |  |  |  |  | 刘婉婷; 电脑1 | 14.42h |  | 346 |  | ¥34.60 | ¥69.20 |
| 8 | 1.3.2 | 设计文档编写 | manual | 1.8d | 2020-11-05 | 2020-11-06 |  |  |  |  | 郑微微; 钱思宇; 电脑2; 电脑3 | 28.83h |  | 692 |  | ¥69.20 | ¥138.40 |
| 9 | 1.3.3 | 设计文档评估 | manual | 1.8d | 2020-11-06 | 2020-11-07 |  |  |  |  | 关子欣; 电脑4 | 14.42h |  | 346 |  | ¥34.60 | ¥69.20 |
| 10 | 1.3.4 | 设计文档修正 | manual | 0.89d | 2020-11-07 | 2020-11-07 |  |  |  |  | 李晓璐; 电脑5 | 7.08h |  | 170 |  | ¥17.00 | ¥34.00 |
| 11 | 1.4 | 需求分析 | milestone, manual | 0d | 2020-11-07 | 2020-11-07 |  |  |  |  |  |  |  |  |  | ¥0.00 | ¥0.00 |
| 12 | 1.5 | **前端设计** |  | 28.47d | 2020-11-08 | 2020-12-13 | 6 | 22% | 22.27d | 2020-11-07 |  | 1422.67h | 255.25h | 34,144 | 6,126 | ¥3,414.40 | ¥6,828.80 |
| 13 | 1.5.1 | **绘制UI界面** |  | 9.14d | 2020-11-08 | 2020-11-18 |  |  |  |  |  | 321.67h |  | 7,720 |  | ¥772.00 | ¥1,544.00 |
| 14 | 1.5.1.1 | 构思页面布局 | manual | 6.39d | 2020-11-08 | 2020-11-15 |  |  |  |  | 李晓璐; 刘婉婷; 张若兰; 郑微微; 电脑1; 电脑2; 电脑3; 电脑4 | 204.33h |  | 4,904 |  | ¥490.40 | ¥980.80 |
| 15 | 1.5.1.2 | 使用墨刀绘制页面 | manual | 3.67d | 2020-11-08 | 2020-11-12 | 14SS |  |  |  | 李晓璐; 刘婉婷; 张若兰; 郑微微; 电脑1; 电脑2; 电脑3; 电脑4 | 117.33h |  | 2,816 |  | ¥281.60 | ¥563.20 |
| 16 | 1.5.2 | **实现UI界面逻辑与功能** |  | 19.3d | 2020-11-19 | 2020-12-13 | 13 | 23% | 14.79d | 2020-11-07 |  | 1101h | 255.25h | 26,424 | 6,126 | ¥2,642.40 | ¥5,284.80 |
| 17 | 1.5.2.1 | **前端** |  | 19.3d | 2020-11-19 | 2020-12-13 |  | 23% | 14.79d | 2020-11-07 |  | 1101h | 255.25h | 26,424 | 6,126 | ¥2,642.40 | ¥5,284.80 |
| 18 | 1.5.2.1.1 | **欢迎页面** |  | 3.64d | 2020-11-19 | 2020-11-23 |  |  |  |  |  | 23.08h |  | 554 |  | ¥55.40 | ¥110.80 |
| 19 | 1.5.2.1.1.1 | 应用框架设计动画并跳转 | manual | 3.64d | 2020-11-19 | 2020-11-23 |  |  |  |  | 电脑1; 关子欣 | 23.08h |  | 554 |  | ¥55.40 | ¥110.80 |
| 20 | 1.5.2.1.2 | **登录界面** |  | 5.47d | 2020-11-19 A | 2020-11-25 A | 18SS | 100% |  |  |  | 57.67h | 57.67h | 1,384 | 1,384 | ¥138.40 | ¥276.80 |
| 21 | 1.5.2.1.2.1 | 应用框架实现登录动画 | manual | 3.64d | 2020-11-19 A | 2020-11-23 A |  | 100% |  |  | 电脑6; 张若兰 | 29.08h | 29.08h | 698 | 698 | ¥69.80 | ¥139.60 |
| 22 | 1.5.2.1.2.2 | 登录验证 | manual | 0.89d | 2020-11-24 A | 2020-11-24 A | 21 | 100% |  |  | 电脑2; 刘婉婷 | 7.08h | 7.08h | 170 | 170 | ¥17.00 | ¥34.00 |
| 23 | 1.5.2.1.2.3 | 登录跳转 | manual | 0.89d | 2020-11-24 A | 2020-11-24 A | 21 | 100% |  |  | 电脑2; 刘婉婷 | 7.08h | 7.08h | 170 | 170 | ¥17.00 | ¥34.00 |
| 24 | 1.5.2.1.2.4 | 注册新账号 | manual | 1.8d | 2020-11-24 A | 2020-11-25 A | 21 | 100% |  |  | 电脑2; 刘婉婷 | 14.42h | 14.42h | 346 | 346 | ¥34.60 | ¥69.20 |

| ID | WBS | Task | Type | Duration | Start | Finish | Predecessors | Complete | Remaining | Resources | Work | Actual work | Cost | Actual cost | 间接成本 | 储备资金 |
| --- | --- | --- | --- | --- | --- | --- | --- | --- | --- | --- | --- | --- | --- | --- | --- | --- |
| 25 | 1.5.2.1.3 | **抽屉页面** |  | 3.64d | 2020-11-19 A | 2020-11-23 A | 20SS | 100% |  |  | 43.5h | 43.5h | 1,044 | 1,044 | ¥104.40 | ¥208.80 |
| 26 | 1.5.2.1.3.1 | 弹出动画 | manual | 1.99d | 2020-11-19 A | 2020-11-22 A |  | 100% |  | 电脑3; 郑微微 | 21.75h | 21.75h | 522 | 522 | ¥52.20 | ¥104.40 |
| 27 | 1.5.2.1.3.2 | 编写页面布局 | manual | 2.72d | 2020-11-21 A | 2020-11-23 A |  | 100% |  | 电脑3; 郑微微 | 21.75h | 21.75h | 522 | 522 | ¥52.20 | ¥104.40 |
| 28 | 1.5.2.1.4 | **“我的”页面** |  | 14.72d | 2020-11-19 | 2020-12-07 |  |  |  |  | 132.58h |  | 3,182 |  | ¥318.20 | ¥636.40 |
| 29 | 1.5.2.1.4.1 | 应用框架完成界面 | manual | 5.47d | 2020-11-19 | 2020-11-25 |  |  |  | 电脑3; 郑微微 | 43.75h |  | 1,050 |  | ¥105.00 | ¥210.00 |
| 30 | 1.5.2.1.4.2 | 实现底部TabHost | manual | 8.3d | 2020-11-26 | 2020-12-05 |  |  |  | 电脑3; 郑微微 | 66.42h |  | 1,594 |  | ¥159.40 | ¥318.80 |
| 31 | 1.5.2.1.4.3 | 实现中部功能区-作品 | manual | 2.8d | 2020-11-27 | 2020-11-30 |  |  |  | 电脑3; 郑微微 | 22.42h |  | 538 |  | ¥53.80 | ¥107.60 |
| 32 | 1.5.2.1.5 | **“发现”页面** |  | 18.39d | 2020-11-19 | 2020-12-11 | 28SS |  |  |  | 189.83h |  | 4,556 |  | ¥455.60 | ¥911.20 |
| 33 | 1.5.2.1.5.1 | 顶部RecyclerView和ViewPager | manual | 12.89d | 2020-11-19 | 2020-12-04 |  |  |  | 电脑4; 钱思宇 | 103.08h |  | 2,474 |  | ¥247.40 | ¥494.80 |
| 34 | 1.5.2.1.5.2 | 实现轮播图 | manual | 1.99d | 2020-11-19 | 2020-11-22 |  |  |  | 电脑5; 关子欣 | 21.75h |  | 522 |  | ¥52.20 | ¥104.40 |
| 35 | 1.5.2.1.5.3 | 热门歌手详情展示 | manual | 1.91d | 2020-12-05 | 2020-12-07 |  |  |  | 电脑4; 钱思宇 | 14.42h |  | 346 |  | ¥34.60 | ¥69.20 |
| 36 | 1.5.2.1.5.4 | 实现每日推荐和热门排行 | manual | 1.91d | 2020-12-06 | 2020-12-08 |  |  |  | 电脑4; 钱思宇 | 14.42h |  | 346 |  | ¥34.60 | ¥69.20 |
| 37 | 1.5.2.1.5.5 | 热门歌曲点击听歌 | manual | 1.91d | 2020-12-07 | 2020-12-09 |  |  |  | 电脑4; 钱思宇 | 14.42h |  | 346 |  | ¥34.60 | ¥69.20 |
| 38 | 1.5.2.1.5.6 | LIVE视频播放 | manual | 2.91d | 2020-12-08 | 2020-12-11 |  |  |  | 电脑4; 钱思宇 | 21.75h |  | 522 |  | ¥52.20 | ¥104.40 |
| 39 | 1.5.2.1.6 | **“灵感”页面** |  | 18.39d | 2020-11-19 A | 2020-12-11 | 32SS | 33% | 12.32d |  | 408.5h | 132.33h | 9,804 | 3,176 | ¥980.40 | ¥1,960.80 |
| 40 | 1.5.2.1.6.1 | 顶部卡片划动切换 | manual | 13.8d | 2020-11-19 | 2020-12-05 |  |  |  | 电脑3; 郑微微 | 110.42h |  | 2,650 |  | ¥265.00 | ¥530.00 |
| 41 | 1.5.2.1.6.2 | 底部伴奏播放列表 | manual | 4.55d | 2020-12-06 | 2020-12-10 |  |  |  | 张若兰; 电脑6 | 36.42h |  | 874 |  | ¥87.40 | ¥174.80 |
| 42 | 1.5.2.1.6.3 | 伴奏和demo详情播放页面 | manual | 3.64d | 2020-11-30 | 2020-12-03 |  |  |  | 张若兰; 电脑6 | 29.08h |  | 698 |  | ¥69.80 | ¥139.60 |
| 43 | 1.5.2.1.6.4 | 悬浮按钮 | manual | 1.8d | 2020-12-10 | 2020-12-11 |  |  |  | 电脑6; 张若兰 | 14.42h |  | 346 |  | ¥34.60 | ¥69.20 |
| 44 | 1.5.2.1.6.5 | **创作页面** |  | 18.39d | 2020-11-19 A | 2020-12-11 |  | 61% | 7.08d |  | 218.17h | 132.33h | 5,236 | 3,176 | ¥523.60 | ¥1,047.20 |
| 45 | 1.5.2.1.6.5.1 | 即时保存文本框 | manual | 1.8d | 2020-11-30 | 2020-12-01 |  |  |  | 关子欣; 电脑1 | 12.83h |  | 308 |  | ¥30.80 | ¥61.60 |
| 46 | 1.5.2.1.6.5.2 | 录音功能 | manual | 9.22d | 2020-11-19 A | 2020-11-30 A |  | 100% |  | 电脑5; 关子欣 | 73.75h | 73.75h | 1,770 | 1,770 | ¥177.00 | ¥354.00 |
| 47 | 1.5.2.1.6.5.3 | 随录音声音大小变化的波形图 | manual | 2.91d | 2020-11-28 A | 2020-12-02 A |  | 100% |  | 电脑5; 关子欣 | 22.42h | 22.42h | 538 | 538 | ¥53.80 | ¥107.60 |
| 48 | 1.5.2.1.6.5.4 | 简单后期处理 | manual | 2.99d | 2020-12-02 | 2020-12-06 |  |  |  | 关子欣; 电脑1 | 29.08h |  | 698 |  | ¥69.80 | ¥139.60 |
| 49 | 1.5.2.1.6.5.5 | 发布功能 | manual | 2.91d | 2020-12-06 A | 2020-12-09 A |  | 100% |  | 张若兰; 电脑6 | 21.75h | 21.75h | 522 | 522 | ¥52.20 | ¥104.40 |
| 50 | 1.5.2.1.6.5.6 | 保存到本地 | manual | 1.91d | 2020-12-09 A | 2020-12-11 A |  | 100% |  | 张若兰; 电脑6; 真机6 | 14.42h | 14.42h | 346 | 346 | ¥34.60 | ¥69.20 |

| ID | WBS | Task | Type | Duration | Start | Finish | Predecessors | Complete | Remaining | Actual start | Resources | Work | Actual work | Cost | Actual cost | 间接成本 | 储备资金 |
| --- | --- | --- | --- | --- | --- | --- | --- | --- | --- | --- | --- | --- | --- | --- | --- | --- | --- |
| 51 | 1.5.2.1.6.5.7 | **发布页面** |  | 5.47d | 2020-12-01 | 2020-12-07 |  |  |  |  |  | 43.92h |  | 1,054 |  | ¥105.40 | ¥210.80 |
| 52 | 1.5.2.1.6.5.7.1 | 动态文本框 | manual | 0.91d | 2020-12-01 | 2020-12-02 |  |  |  |  | 张若兰; 电脑6 | 7.08h |  | 170 |  | ¥17.00 | ¥34.00 |
| 53 | 1.5.2.1.6.5.7.2 | 从本地图片中选封面 | manual | 2.91d | 2020-12-02 | 2020-12-06 |  |  |  |  | 电脑2; 李晓璐 | 21.75h |  | 522 |  | ¥52.20 | ¥104.40 |
| 54 | 1.5.2.1.6.5.7.3 | 权限等功能 | manual | 2d | 2020-12-05 | 2020-12-07 |  |  |  |  | 李晓璐; 电脑2 | 15.08h |  | 362 |  | ¥36.20 | ¥72.40 |
| 55 | 1.5.2.1.7 | **搜索页面** |  | 7.3d | 2020-12-03 | 2020-12-11 |  |  |  |  |  | 64.75h |  | 1,554 |  | ¥155.40 | ¥310.80 |
| 56 | 1.5.2.1.7.1 | 输入框 | manual | 0.91d | 2020-12-03 | 2020-12-04 |  |  |  |  | 刘婉婷; 电脑3 | 7.08h |  | 170 |  | ¥17.00 | ¥34.00 |
| 57 | 1.5.2.1.7.2 | 搜索历史 | manual | 1.8d | 2020-12-04 | 2020-12-06 |  |  |  |  | 电脑3; 刘婉婷 | 14.42h |  | 346 |  | ¥34.60 | ¥69.20 |
| 58 | 1.5.2.1.7.3 | 热搜榜 | manual | 1.8d | 2020-12-07 | 2020-12-08 |  |  |  |  | 电脑3; 刘婉婷 | 14.42h |  | 346 |  | ¥34.60 | ¥69.20 |
| 59 | 1.5.2.1.7.4 | 跳转页面 | manual | 2.72d | 2020-12-09 | 2020-12-11 |  |  |  |  | 电脑3; 刘婉婷 | 21.75h |  | 522 |  | ¥52.20 | ¥104.40 |
| 60 | 1.5.2.1.7.5 | 返回按钮 | manual | 0.89d | 2020-12-11 | 2020-12-11 |  |  |  |  | 电脑3; 刘婉婷 | 7.08h |  | 170 |  | ¥17.00 | ¥34.00 |
| 61 | 1.5.2.1.8 | **播放页面** |  | 19.3d | 2020-11-19 | 2020-12-13 |  | 14% | 16.59d | 2020-11-07 |  | 181.08h | 21.75h | 4,346 | 522 | ¥434.60 | ¥869.20 |
| 62 | 1.5.2.1.8.1 | 波形图 | manual | 2.91d | 2020-12-01 A | 2020-12-04 A |  | 100% |  |  | 电脑5; 关子欣 | 21.75h | 21.75h | 522 | 522 | ¥52.20 | ¥104.40 |
| 63 | 1.5.2.1.8.2 | 播放暂停等功能 | manual | 3.64d | 2020-11-19 | 2020-11-23 |  |  |  |  | 电脑2; 李晓璐 | 29.08h |  | 698 |  | ¥69.80 | ¥139.60 |
| 64 | 1.5.2.1.8.3 | 收藏 | manual | 0.99d | 2020-12-04 | 2020-12-06 |  |  |  |  | 电脑2; 李晓璐 | 14.42h |  | 346 |  | ¥34.60 | ¥69.20 |
| 65 | 1.5.2.1.8.4 | 显示歌词页 | manual | 0.99d | 2020-12-04 | 2020-12-06 |  |  |  |  | 电脑2; 李晓璐 | 14.42h |  | 346 |  | ¥34.60 | ¥69.20 |
| 66 | 1.5.2.1.8.5 | 播放列表 | manual | 1.91d | 2020-12-06 | 2020-12-08 |  |  |  |  | 电脑2; 李晓璐 | 14.42h |  | 346 |  | ¥34.60 | ¥69.20 |
| 67 | 1.5.2.1.8.6 | 查看评论 | manual | 5.47d | 2020-11-07 | 2020-11-12 |  |  |  |  | 电脑2; 李晓璐 | 43.75h |  | 1,050 |  | ¥105.00 | ¥210.00 |
| 68 | 1.5.2.1.8.7 | 添加到歌单 | manual | 1.91d | 2020-12-07 | 2020-12-09 |  |  |  |  | 电脑2; 李晓璐 | 14.42h |  | 346 |  | ¥34.60 | ¥69.20 |
| 69 | 1.5.2.1.8.8 | 下载 | manual | 0.91d | 2020-12-09 | 2020-12-10 |  |  |  |  | 电脑4; 钱思宇 | 7.08h |  | 170 |  | ¥17.00 | ¥34.00 |
| 70 | 1.5.2.1.8.9 | 分享 | manual | 1.99d | 2020-12-10 | 2020-12-13 |  |  |  |  | 电脑4; 钱思宇 | 21.75h |  | 522 |  | ¥52.20 | ¥104.40 |
| 71 | 1.6 | 前端设计 | milestone, manual | 0d | 2020-12-12 | 2020-12-12 |  |  |  |  |  |  |  |  |  | ¥0.00 | ¥0.00 |
| 72 | 1.7 | **后端设计** |  | 13.8d | 2020-11-18 A | 2020-12-04 A | 12SS | 100% |  |  |  | 475.08h | 475.08h | 11,402 | 11,402 | ¥1,140.20 | ¥2,280.40 |
| 73 | 1.7.1 | **数据库设计** |  | 7.3d | 2020-11-18 A | 2020-11-26 A |  | 100% |  |  |  | 321.25h | 321.25h | 7,710 | 7,710 | ¥771.00 | ¥1,542.00 |
| 74 | 1.7.1.1 | 用户信息表 | manual | 0.89d | 2020-11-18 A | 2020-11-18 A |  | 100% |  |  | 电脑2; 电脑4; 关子欣; 李晓璐; 刘婉婷; 钱思宇; 郑微微 | 35.42h | 35.42h | 850 | 850 | ¥85.00 | ¥170.00 |
| 75 | 1.7.1.2 | 用户关注信息表 | manual | 0.89d | 2020-11-19 A | 2020-11-19 A |  | 100% |  |  | 电脑2; 电脑4; 关子欣; 李晓璐; 刘婉婷; 钱思宇; 郑微微 | 35.42h | 35.42h | 850 | 850 | ¥85.00 | ¥170.00 |
| 76 | 1.7.1.3 | 歌曲信息表 | manual | 0.89d | 2020-11-20 A | 2020-11-20 A |  | 100% |  |  | 电脑2; 电脑4; 关子欣; 李晓璐; 刘婉婷; 钱思宇; 郑微微 | 35.42h | 35.42h | 850 | 850 | ¥85.00 | ¥170.00 |
| 77 | 1.7.1.4 | 音乐类型表 | manual | 0.89d | 2020-11-21 A | 2020-11-21 A |  | 100% |  |  | 电脑2; 电脑4; 关子欣; 李晓璐; 刘婉婷; 钱思宇; 郑微微 | 35.42h | 35.42h | 850 | 850 | ¥85.00 | ¥170.00 |
| 78 | 1.7.1.5 | 歌曲伴奏风格表 | manual | 0.89d | 2020-11-22 A | 2020-11-22 A |  | 100% |  |  | 电脑2; 电脑4; 关子欣; 李晓璐; 刘婉婷; 钱思宇; 郑微微 | 35.42h | 35.42h | 850 | 850 | ¥85.00 | ¥170.00 |
| 79 | 1.7.1.6 | 伴奏信息表 | manual | 0.89d | 2020-11-23 A | 2020-11-23 A |  | 100% |  |  | 电脑2; 电脑4; 关子欣; 李晓璐; 刘婉婷; 钱思宇; 郑微微 | 35.42h | 35.42h | 850 | 850 | ¥85.00 | ¥170.00 |
| 80 | 1.7.1.7 | 收藏信息表 | manual | 2.72d | 2020-11-24 A | 2020-11-26 A |  | 100% |  |  | 电脑2; 电脑4; 关子欣; 李晓璐; 刘婉婷; 钱思宇; 郑微微 | 108.75h | 108.75h | 2,610 | 2,610 | ¥261.00 | ¥522.00 |

| ID | WBS | Task | Type | Duration | Start | Finish | Predecessors | Complete | Resources | Work | Actual work | Cost | Actual cost | 间接成本 | 储备资金 |
| --- | --- | --- | --- | --- | --- | --- | --- | --- | --- | --- | --- | --- | --- | --- | --- |
| 81 | 1.7.2 | **业务逻辑设计** |  | 13.71d | 2020-11-18 A | 2020-12-04 A |  | 100% |  | 153.83h | 153.83h | 3,692 | 3,692 | ¥369.20 | ¥738.40 |
| 82 | 1.7.2.1 | 验证用户登录信息 | manual | 8.22d | 2020-11-18 A | 2020-11-27 A |  | 100% | 电脑2; 李晓璐 | 65.75h | 65.75h | 1,578 | 1,578 | ¥157.80 | ¥315.60 |
| 83 | 1.7.2.2 | 用户注册信息录入 | manual | 1.92d | 2020-11-27 A | 2020-11-28 A |  | 100% | 电脑2; 李晓璐 | 15.33h | 15.33h | 368 | 368 | ¥36.80 | ¥73.60 |
| 84 | 1.7.2.3 | 展示用户信息 | manual | 1.89d | 2020-11-28 A | 2020-11-29 A |  | 100% | 电脑2; 李晓璐 | 15.08h | 15.08h | 362 | 362 | ¥36.20 | ¥72.40 |
| 85 | 1.7.2.4 | 展示歌曲信息 | manual | 1.8d | 2020-11-29 A | 2020-11-30 A |  | 100% | 电脑2; 李晓璐 | 14.42h | 14.42h | 346 | 346 | ¥34.60 | ¥69.20 |
| 86 | 1.7.2.5 | 展示歌曲评论 | manual | 1.8d | 2020-12-01 A | 2020-12-02 A |  | 100% | 电脑2; 李晓璐 | 14.42h | 14.42h | 346 | 346 | ¥34.60 | ¥69.20 |
| 87 | 1.7.2.6 | 展示使用伴奏创作的demo信息 | manual | 1.8d | 2020-12-02 A | 2020-12-03 A |  | 100% | 电脑2; 李晓璐 | 14.42h | 14.42h | 346 | 346 | ¥34.60 | ¥69.20 |
| 88 | 1.7.2.7 | 展示伴奏信息 | manual | 1.8d | 2020-12-03 A | 2020-12-04 A |  | 100% | 电脑2; 李晓璐 | 14.42h | 14.42h | 346 | 346 | ¥34.60 | ¥69.20 |
| 89 | 1.8 | 后端设计 | milestone, manual | 0d | 2020-12-05 | 2020-12-05 |  |  |  |  |  |  |  | ¥0.00 | ¥0.00 |
| 90 | 1.9 | **测试** |  | 0.89d | 2020-12-16 | 2020-12-16 | 12, 72 |  |  | 35.33h |  | 848 |  | ¥84.80 | ¥169.60 |
| 91 | 1.9.1 | **设计测试用例** |  | 0.89d | 2020-12-16 | 2020-12-16 |  |  |  | 21.17h |  | 508 |  | ¥50.80 | ¥101.60 |
| 92 | 1.9.1.1 | 黑盒测试 | manual | 0.89d | 2020-12-16 | 2020-12-16 |  |  | 电脑3; 刘婉婷 | 7.08h |  | 170 |  | ¥17.00 | ¥34.00 |
| 93 | 1.9.1.2 | 白盒测试 | manual | 1.76d | 2020-12-15 | 2020-12-16 |  |  | 电脑3; 刘婉婷 | 14.08h |  | 338 |  | ¥33.80 | ¥67.60 |
| 94 | 1.9.2 | 实现测试用例 | manual | 0.89d | 2020-12-16 | 2020-12-16 |  |  | 电脑3; 刘婉婷 | 7.08h |  | 170 |  | ¥17.00 | ¥34.00 |
| 95 | 1.9.3 | 用户体验 | manual | 0.89d | 2020-12-16 | 2020-12-16 |  |  | 郑微微; 电脑5 | 7.08h |  | 170 |  | ¥17.00 | ¥34.00 |
| 96 | 1.10 | 测试 | manual | 0.89d | 2020-12-17 | 2020-12-17 | 90 |  | 电脑3; 刘婉婷 | 7.08h |  | 170 |  | ¥17.00 | ¥34.00 |
| 97 | 1.11 | 项目展示 | manual | 0.12d | 2020-12-17 | 2020-12-17 | 96 |  | 电脑4; 钱思宇 | 1h |  |  |  | ¥0.00 |  |
